# BIM PROJECT New

Schedule from MS Project, 2023-08-14 to 2023-12-07.

## Calendars

- BIM project: Mon-Fri 08:00-12:00, 13:00-17:00; Sat-Sun off.

## Schedule

| ID | WBS | Task | Duration | Start | Finish | Predecessors | Total slack | Free slack | Text2 | Text1 |
| --- | --- | --- | --- | --- | --- | --- | --- | --- | --- | --- |
| 1 | 1 | **BIM Project** | 84d | 2023-08-14 | 2023-12-07 |  | 0d |  |  |  |
| 2 | 1.1 | Preconstruction | 5d | 2023-08-14 | 2023-08-18 |  | 0d |  | Construcion |  |
| 3 | 1.2 | Level 1A: Floor Slab / Foundation Edges | 1d | 2023-08-21 | 2023-08-21 | 2 | 0d |  | Construcion | 110A |
| 4 | 1.3 | Level 1B: Floor Slab / Foundation Edges | 1d | 2023-08-22 | 2023-08-22 | 3 | 6d | 0d | Construcion | 110B |
| 5 | 1.4 | Level 1C: Floor Slab / Foundation Edges | 1d | 2023-08-23 | 2023-08-23 | 4 | 6d | 0d | Construcion | 110C |
| 6 | 1.5 | Level 1A: Floor Slab / Foundations | 3d | 2023-08-22 | 2023-08-24 | 3 | 0d |  | Construcion | 111A |
| 7 | 1.6 | Level 1B: Floor Slab / Foundations | 2d | 2023-08-23 | 2023-08-24 | 4 | 6d | 2d | Construcion | 111B |
| 8 | 1.7 | Level 1C: Floor Slab / Foundations | 3d | 2023-08-24 | 2023-08-28 | 5 | 6d | 1d | Construcion | 111C |
| 9 | 1.8 | Level 1A: Columns | 2d | 2023-08-25 | 2023-08-28 | 6 | 0d |  | Construcion | 120A |
| 10 | 1.9 | Level 1B: Columns | 1d | 2023-08-29 | 2023-08-29 | 7, 9 | 4d | 0d | Construcion | 120B |
| 11 | 1.10 | Level 1C: Columns | 2d | 2023-08-30 | 2023-08-31 | 8, 10 | 5d | 2d | Construcion | 120C |
| 12 | 1.11 | Level 1A: Beams | 3d | 2023-08-29 | 2023-08-31 | 9 | 0d |  | Construcion | 130A |
| 13 | 1.12 | Level 1B: Beams | 2d | 2023-09-01 | 2023-09-04 | 10, 12 | 2d | 0d | Construcion | 130B |
| 14 | 1.13 | Level 1C: Beams | 3d | 2023-09-05 | 2023-09-07 | 11, 13 | 3d |  | Construcion | 130C |
| 15 | 1.14 | Level 1A: Joists | 4d | 2023-09-01 | 2023-09-06 | 12 | 0d |  | Construcion | 140A |
| 16 | 1.15 | Level 1B: Joists | 4d | 2023-09-07 | 2023-09-12 | 13, 15 | 0d |  | Construcion | 140B |
| 17 | 1.16 | Level 1C: Joists | 4d | 2023-09-13 | 2023-09-18 | 14, 16 | 0d |  | Construcion | 140C |
| 18 | 1.17 | Level 1A: Exterior Walls | 11d | 2023-09-19 | 2023-10-03 | 15, 16, 17 | 47d |  | Construcion | 150 |
| 19 | 1.18 | Level 2A: Floor Deck | 2d | 2023-09-07 | 2023-09-08 | 15 | 1d | 0d | Construcion | 210A |
| 20 | 1.19 | Level 2B: Floor Deck | 2d | 2023-09-13 | 2023-09-14 | 16, 19 | 1d | 0d | Construcion | 210B |
| 21 | 1.20 | Level 2C: Floor Deck | 2d | 2023-09-19 | 2023-09-20 | 17, 20 | 0d |  | Construcion | 210C |
| 22 | 1.21 | Level 2A: Columns | 2d | 2023-09-11 | 2023-09-12 | 19 | 1d | 0d | Construcion | 220A |
| 23 | 1.22 | Level 2B: Columns | 2d | 2023-09-15 | 2023-09-18 | 20, 22 | 1d | 0d | Construcion | 220B |
| 24 | 1.23 | Level 2C: Columns | 2d | 2023-09-21 | 2023-09-22 | 21, 23 | 0d |  | Construcion | 220C |
| 25 | 1.24 | Level 2A: Beams | 3d | 2023-09-13 | 2023-09-15 | 22 | 1d | 0d | Construcion | 230A |
| 26 | 1.25 | Level 2B: Beams | 3d | 2023-09-19 | 2023-09-21 | 23, 25 | 1d | 0d | Construcion | 230B |
| 27 | 1.26 | Level 2C: Beams | 3d | 2023-09-25 | 2023-09-27 | 24, 26 | 0d |  | Construcion | 230C |
| 28 | 1.27 | Level 2A: Joists | 4d | 2023-09-18 | 2023-09-21 | 25 | 1d | 0d | Construcion | 240A |
| 29 | 1.28 | Level 2B: Joists | 3d | 2023-09-22 | 2023-09-26 | 26, 28 | 1d | 0d | Construcion | 240B |
| 30 | 1.29 | Level 2C: Joists | 4d | 2023-09-28 | 2023-10-03 | 27, 29 | 0d |  | Construcion | 240C |
| 31 | 1.30 | Level 2A: Exterior Walls | 11d | 2023-10-04 | 2023-10-18 | 28, 29, 30 | 36d |  | Construcion | 250 |
| 32 | 1.31 | Level 3A: Floor Deck | 2d | 2023-09-22 | 2023-09-25 | 28 | 1d | 0d | Construcion | 310A |
| 33 | 1.32 | Level 3B: Floor Deck | 2d | 2023-09-27 | 2023-09-28 | 29, 32 | 2d | 0d | Construcion | 310B |
| 34 | 1.33 | Level 3C: Floor Deck | 2d | 2023-10-04 | 2023-10-05 | 30, 33 | 0d |  | Construcion | 310C |
| 35 | 1.34 | Level 3A: Columns | 2d | 2023-09-26 | 2023-09-27 | 32 | 1d | 0d | Construcion | 320A |
| 36 | 1.35 | Level 3B: Columns | 2d | 2023-09-29 | 2023-10-02 | 33, 35 | 2d | 0d | Construcion | 320B |
| 37 | 1.36 | Level 3C: Columns | 2d | 2023-10-06 | 2023-10-09 | 34, 36 | 0d |  | Construcion | 320C |
| 38 | 1.37 | Level 3A: Beams | 3d | 2023-09-28 | 2023-10-02 | 35 | 1d | 0d | Construcion | 330A |
| 39 | 1.38 | Level 3B: Beams | 3d | 2023-10-03 | 2023-10-05 | 36, 38 | 2d | 1d | Construcion | 330B |
| 40 | 1.39 | Level 3C: Beams | 3d | 2023-10-10 | 2023-10-12 | 37, 39 | 0d |  | Construcion | 330C |
| 41 | 1.40 | Level 3A: Joists | 4d | 2023-10-03 | 2023-10-06 | 38 | 1d | 0d | Construcion | 340A |
| 42 | 1.41 | Level 3B: Joists | 3d | 2023-10-09 | 2023-10-11 | 39, 41 | 1d | 0d | Construcion | 340B |
| 43 | 1.42 | Level 3C: Joists | 4d | 2023-10-13 | 2023-10-18 | 40, 42 | 0d |  | Construcion | 340C |
| 44 | 1.43 | Level 3A: Exterior Walls-CORE | 11d | 2023-10-19 | 2023-11-02 | 41, 42, 43 | 0d |  | Construcion | 350 |
| 45 | 1.44 | Level 4A: Roof | 2d | 2023-10-09 | 2023-10-10 | 41 | 38d | 1d | Construcion | 410A |
| 46 | 1.45 | Level 4B: Roof | 2d | 2023-10-12 | 2023-10-13 | 42, 45 | 37d | 3d | Construcion | 410B |
| 47 | 1.46 | Level 4C: Roof | 2d | 2023-10-19 | 2023-10-20 | 43, 46 | 34d |  | Construcion | 410C |
| 48 | 1.47 | All: Stairs | 10d | 2023-10-13 | 2023-10-26 | 38, 39, 40 | 25d | 0d | Construcion | 510 |
| 49 | 1.48 | All: Windows & Doors | 10d | 2023-11-03 | 2023-11-16 | 44 | 0d |  | Construcion | 610 |
| 50 | 1.49 | All: Curtain Walls | 10d | 2023-11-03 | 2023-11-16 | 44 | 15d |  | Construcion | 710 |
| 51 | 1.50 | All: Railings | 5d | 2023-10-27 | 2023-11-02 | 48 | 25d |  | Construcion | 810 |
| 52 | 1.51 | All: Interior Walls | 15d | 2023-11-17 | 2023-12-07 | 49 | 0d |  | Construcion | 910 |
